# NCICBSecurityService

Schedule from MS Project, 2004-08-02 to 2005-03-07, A marks actual dates.
Home

## Calendars

- Standard: Mon-Fri 08:00-12:00, 13:00-17:00; Sat-Sun off.

## Resources

| Resource |
| --- |
| Vinay |
| Resource 1 |
| Brian |
| Kalpesh |
| Kunal |
| Eric |
| Charles |

## Schedule

| ID | WBS | Task | Duration | Start | Finish | Predecessors | Complete | Remaining | Total slack | Free slack | Constraint | Resources | Work | Actual work |
| --- | --- | --- | --- | --- | --- | --- | --- | --- | --- | --- | --- | --- | --- | --- |
| 1 | 1 | **Security Module (Release One)** | 156d? | 2004-08-02 A | 2005-03-07 |  | 26% | 116.17d? | 0d |  |  |  | 5788h | 1373.64h |
| 2 | 1.1 | **Inception** | 38d | 2004-08-02 A | 2004-09-22 A |  | 100% |  |  |  |  |  | 512h | 512h |
| 3 | 1.1.1 | Phase I Evaluation | 7d | 2004-08-02 A | 2004-08-10 A |  | 100% |  |  |  | start no earlier than 2004-08-02 | Vinay; Brian | 112h | 112h |
| 4 | 1.1.2 | Interview NCICB Team Leads | 12d | 2004-08-09 A | 2004-08-24 A |  | 100% |  |  |  | start no earlier than 2004-08-09 | Vinay; Brian | 192h | 192h |
| 5 | 1.1.3 | Scope and Vision Document | 10d | 2004-08-30 A | 2004-09-10 A |  | 100% |  |  |  | start no earlier than 2004-08-30 | Brian | 80h | 80h |
| 6 | 1.1.4 | Supplentary Specifications | 3d | 2004-09-01 A | 2004-09-03 A | 4 | 100% |  |  |  | start no earlier than 2004-09-01 | Vinay | 24h | 24h |
| 7 | 1.1.5 | Fuctional Specifications | 5d | 2004-09-06 A | 2004-09-10 A | 6 | 100% |  |  |  |  | Vinay | 40h | 40h |
| 8 | 1.1.6 | Use Case Model | 5d | 2004-09-13 A | 2004-09-17 A | 7 | 100% |  |  |  |  | Vinay | 40h | 40h |
| 9 | 1.1.7 | Identify Risk List | 3d | 2004-09-20 A | 2004-09-22 A | 8 | 100% |  |  |  |  | Kalpesh | 24h | 24h |
| 10 | 1.2 | **Elaboration** | 23d? | 2004-09-27 A | 2004-10-27 |  | 78% | 5.09d? | 93d |  |  |  | 452h | 316h |
| 11 | 1.2.1 | **Iteration I** | 13d | 2004-09-27 A | 2004-10-13 |  | 92% | 1.08d | 103d |  |  |  | 152h | 148h |
| 12 | 1.2.1.1 | Level 1 - 2 Use Cases | 5d | 2004-09-27 A | 2004-10-01 A |  | 100% |  |  |  |  | Vinay | 40h | 40h |
| 13 | 1.2.1.2 | Risk List Priority | 3d | 2004-09-27 A | 2004-09-29 A |  | 100% |  |  |  |  | Vinay | 24h | 24h |
| 14 | 1.2.1.3 | Detailed Iteration Release Plan | 5d | 2004-09-27 A | 2004-10-01 |  | 95% | 0.25d | 111d |  |  | Vinay; Brian | 80h | 76h |
| 15 | 1.2.1.4 | **Finalize Requirements** | 9d | 2004-10-01 A | 2004-10-13 |  | 50% | 4.5d | 103d |  |  |  | 8h | 8h |
| 16 | 1.2.1.4.1 | Stakeholder Sign Off | 1d | 2004-10-01 | 2004-10-01 |  |  |  | 111d |  | start no earlier than 2004-10-01 |  |  |  |
| 17 | 1.2.1.4.2 | User Working Group Review | 1d | 2004-10-13 A | 2004-10-13 A | 16 | 100% |  |  |  | start no earlier than 2004-10-13 | Vinay | 8h | 8h |
| 18 | 1.2.2 | **Iteration II** | 17d? | 2004-10-05 A | 2004-10-27 |  | 68% | 5.53d? | 93d |  |  |  | 300h | 168h |
| 19 | 1.2.2.1 | Develop Architecture Prototype | 3d | 2004-10-25 A | 2004-10-27 A |  | 100% |  |  |  | start no earlier than 2004-10-25 |  |  |  |
| 20 | 1.2.2.2 | Software Architecture Document | 15d | 2004-10-05 A | 2004-10-25 |  | 70% | 4.5d | 94d | 0d | finish no earlier than 2004-10-25 | Vinay; Kunal; Eric | 276h | 168h |
| 21 | 1.2.2.3 | Architecture Review | 1d? | 2004-10-26 | 2004-10-26 | 20 |  |  | 94d |  |  | Brian; Kalpesh | 16h |  |
| 22 | 1.2.2.4 | Prioritize Risk List | 1d | 2004-10-26 | 2004-10-26 |  |  |  | 94d |  | start no earlier than 2004-10-26 | Vinay | 8h |  |
| 23 | 1.3 | Phase Review | 1d? | 2004-09-27 | 2004-09-27 |  |  |  | 115d |  |  | Eric; Kalpesh | 16h |  |
| 24 | 1.4 | **Construction** | 88d | 2004-10-18 A | 2005-02-16 |  | 10% | 79.09d | 13d |  |  |  | 4424h | 545.64h |
| 25 | 1.4.1 | **Iteration I** | 19d | 2004-10-26 A | 2004-11-19 |  | 44% | 10.66d | 76d |  |  |  | 320h | 156h |
| 26 | 1.4.1.1 | Iteration Plan | 1d | 2004-10-26 | 2004-10-26 |  |  |  | 94d |  | start no earlier than 2004-10-26 | Vinay; Kunal | 16h |  |

| ID | WBS | Task | Duration | Start | Finish | Predecessors | Complete | Remaining | Total slack | Free slack | Constraint | Resources | Work | Actual work |
| --- | --- | --- | --- | --- | --- | --- | --- | --- | --- | --- | --- | --- | --- | --- |
| 27 | 1.4.1.2 | **Authentication** | 18d | 2004-10-27 A | 2004-11-19 |  | 45% | 9.84d | 76d |  |  |  | 304h | 156h |
| 28 | 1.4.1.2.1 | **Design** | 4d | 2004-10-27 A | 2004-11-01 |  | 63% | 1.5d | 90d |  |  |  | 56h | 36h |
| 29 | 1.4.1.2.1.1 | **Documentation** | 4d | 2004-10-27 A | 2004-11-01 |  | 63% | 1.5d | 90d |  |  |  | 56h | 36h |
| 30 | 1.4.1.2.1.1.1 | Level 3 - 4 Use Cases | 0.5d | 2004-10-27 A | 2004-10-27 |  | 50% | 0.25d | 93.5d |  | start no earlier than 2004-10-27 | Kunal; Vinay | 8h | 4h |
| 31 | 1.4.1.2.1.1.2 | Use Case Model | 0.5d | 2004-10-27 A | 2004-10-27 A | 30 | 100% |  |  |  | start no earlier than 2004-10-27 | Vinay; Kunal | 8h | 8h |
| 32 | 1.4.1.2.1.1.3 | Working Group Use Case Review | 1d | 2004-10-28 A | 2004-10-28 A | 31 | 100% |  |  |  |  | Kalpesh | 8h | 8h |
| 33 | 1.4.1.2.1.1.4 | UML Sequence Diagram | 1d | 2004-10-29 | 2004-10-29 | 32 |  |  | 91d |  |  | Kunal | 8h |  |
| 34 | 1.4.1.2.1.1.5 | UML Class Diagram | 1d | 2004-11-01 A | 2004-11-01 A | 33 | 100% |  |  |  |  | Vinay | 8h | 8h |
| 35 | 1.4.1.2.1.1.6 | UML Activity Diagram | 1d | 2004-10-29 | 2004-10-29 |  |  |  | 91d |  | start no earlier than 2004-10-29 | Vinay | 8h |  |
| 36 | 1.4.1.2.1.1.7 | Design Review | 1d | 2004-11-01 A | 2004-11-01 A | 35 | 100% |  |  |  |  | Brian | 8h | 8h |
| 37 | 1.4.1.2.2 | **Implementation** | 11d | 2004-11-01 A | 2004-11-15 |  | 49% | 5.59d | 80d |  |  |  | 208h | 120h |
| 38 | 1.4.1.2.2.1 | Data Model Enhancement | 5d | 2004-11-01 A | 2004-11-05 A |  | 100% |  |  |  | start no earlier than 2004-11-01 | Vinay; Kalpesh | 80h | 80h |
| 39 | 1.4.1.2.2.2 | Data Model Documentation with Examples | 1d | 2004-11-08 | 2004-11-08 |  |  |  | 85d |  | start no earlier than 2004-11-08 | Vinay | 8h |  |
| 40 | 1.4.1.2.2.3 | **JAAS Authentication Modules** | 10d | 2004-11-02 A | 2004-11-15 |  | 35% | 6.51d | 76d |  |  |  | 120h | 40h |
| 41 | 1.4.1.2.2.3.1 | LDAP | 5d | 2004-11-02 | 2004-11-08 | 36 |  |  | 80.67d | 4.67d | start no earlier than 2004-11-02 | Kunal | 40h |  |
| 42 | 1.4.1.2.2.3.2 | RBDMS | 5d | 2004-11-08 A | 2004-11-12 A | 36 | 100% |  |  |  | finish no earlier than 2004-11-12 | Vinay | 40h | 40h |
| 43 | 1.4.1.2.2.3.3 | Junit Test Development | 4d | 2004-11-09 | 2004-11-12 |  |  |  | 76.67d | 0.67d | finish no earlier than 2004-11-12 | Eric | 32h |  |
| 44 | 1.4.1.2.2.3.4 | Code Reviews | 0.33d | 2004-11-15 | 2004-11-15 | 41, 42, 43 |  |  | 76d | 0d | finish no earlier than 2004-11-15 | Brian; Kalpesh; Charles | 8h |  |
| 45 | 1.4.1.2.3 | **Unit Testing** | 4d | 2004-11-16 | 2004-11-19 |  |  |  | 76d |  |  |  | 40h |  |
| 46 | 1.4.1.2.3.1 | Perform Testing | 1d | 2004-11-16 | 2004-11-16 | 44 |  |  | 76d | 0d | start no earlier than 2004-11-15 | Eric | 8h |  |
| 47 | 1.4.1.2.3.2 | Evaluate Results | 1d | 2004-11-17 | 2004-11-17 | 46 |  |  | 76d | 0d | start no earlier than 2004-11-16 | Eric; Vinay | 16h |  |
| 48 | 1.4.1.2.3.3 | Integration Testing | 1d | 2004-11-18 | 2004-11-18 | 47 |  |  | 76d | 0d |  | Eric | 8h |  |
| 49 | 1.4.1.2.3.4 | User Working Group Review (SAD, Design Models) | 1d | 2004-11-19 | 2004-11-19 | 48 |  |  | 76d |  |  | Kalpesh | 8h |  |
| 50 | 1.4.2 | **Iteration II** | 38d | 2004-11-30 | 2005-01-20 |  |  |  | 27d | 0d |  |  | 408h |  |
| 51 | 1.4.2.1 | Iteration Plan | 1d | 2004-11-30 | 2004-11-30 |  |  |  | 60d | 0d | start no earlier than 2004-11-30 | Vinay | 8h |  |

| ID | WBS | Task | Duration | Start | Finish | Predecessors | Total slack | Free slack | Constraint | Resources | Work |
| --- | --- | --- | --- | --- | --- | --- | --- | --- | --- | --- | --- |
| 52 | 1.4.2.2 | **Authorization** | 37d | 2004-12-01 | 2005-01-20 |  | 27d |  |  |  | 400h |
| 53 | 1.4.2.2.1 | **Design** | 6d | 2004-12-01 | 2004-12-08 |  | 58d |  |  |  | 64h |
| 54 | 1.4.2.2.1.1 | **Documentation** | 6d | 2004-12-01 | 2004-12-08 |  | 58d |  |  |  | 64h |
| 55 | 1.4.2.2.1.1.1 | Level 3 - 4 Use Cases | 1d | 2004-12-01 | 2004-12-01 |  | 63d |  | start no earlier than 2004-12-01 | Vinay; Kunal | 16h |
| 56 | 1.4.2.2.1.1.2 | Use Case Model | 1d | 2004-12-01 | 2004-12-01 | 51 | 60d | 0d | start no earlier than 2004-11-22 | Kunal | 8h |
| 57 | 1.4.2.2.1.1.3 | User Working Group Review | 1d | 2004-12-02 | 2004-12-02 | 56 | 60d | 0d |  | Kalpesh | 8h |
| 58 | 1.4.2.2.1.1.4 | UML Sequence Diagram | 1d | 2004-12-03 | 2004-12-03 | 57 | 60d | 0d |  | Kunal | 8h |
| 59 | 1.4.2.2.1.1.5 | UML Class Diagram | 1d | 2004-12-06 | 2004-12-06 | 58 | 60d |  |  | Vinay | 8h |
| 60 | 1.4.2.2.1.1.6 | UML Activity Diagram | 1d | 2004-12-06 | 2004-12-06 |  | 59d | 0d | start no earlier than 2004-12-06 | Vinay | 8h |
| 61 | 1.4.2.2.1.1.7 | Design Review | 1d | 2004-12-07 | 2004-12-07 | 60 | 59d |  |  | Brian | 8h |
| 62 | 1.4.2.2.1.1.8 | UML Model for EVS | 2d | 2004-12-07 | 2004-12-08 |  | 58d |  | start no earlier than 2004-12-07 |  |  |
| 63 | 1.4.2.2.2 | **Implementation** | 26d | 2004-12-09 | 2005-01-13 |  | 32d |  |  |  | 288h |
| 64 | 1.4.2.2.2.1 | Authorization XML Schema | 10d | 2004-12-09 | 2004-12-22 |  | 48d |  | start no earlier than 2004-12-09 | Vinay; Brian | 160h |
| 65 | 1.4.2.2.2.2 | **Authorization API** | 16d | 2004-12-23 | 2005-01-13 |  | 32d |  |  |  | 128h |
| 66 | 1.4.2.2.2.2.1 | Enhance Phase I Object Model | 15d | 2004-12-23 | 2005-01-12 | 38 | 32d | 0d | start no earlier than 2004-12-23 | Vinay | 120h |
| 67 | 1.4.2.2.2.2.2 | Junit Test Development | 1d | 2005-01-13 | 2005-01-13 | 66 | 32d |  | finish no earlier than 2005-01-13 | Eric | 8h |
| 68 | 1.4.2.2.3 | **Unit Testing** | 5d | 2005-01-14 | 2005-01-20 |  | 27d |  |  |  | 48h |
| 69 | 1.4.2.2.3.1 | Unit Testing | 2d | 2005-01-14 | 2005-01-17 |  | 27d | 0d | start no earlier than 2005-01-14 | Eric | 16h |
| 70 | 1.4.2.2.3.2 | Evaluate Results | 1d | 2005-01-18 | 2005-01-18 | 69 | 27d | 0d |  | Vinay; Eric | 16h |
| 71 | 1.4.2.2.3.3 | Integration Testing | 1d | 2005-01-19 | 2005-01-19 | 70 | 27d | 0d |  | Vinay | 8h |
| 72 | 1.4.2.2.3.4 | User Working Group Review | 1d | 2005-01-20 | 2005-01-20 | 71 | 27d |  |  | Kalpesh | 8h |
| 73 | 1.4.3 | **Iteration III** | 28d | 2004-12-21 | 2005-01-27 |  | 27d |  |  |  | 208h |
| 74 | 1.4.3.1 | Iteration Plan | 1d | 2004-12-21 | 2004-12-21 |  | 39d | 0d | start no earlier than 2004-12-21 | Kunal | 8h |
| 75 | 1.4.3.2 | **Prototype (Reference Implementation)** | 27d | 2004-12-22 | 2005-01-27 |  | 27d |  |  |  | 200h |
| 76 | 1.4.3.2.1 | **Implementation** | 27d | 2004-12-22 | 2005-01-27 |  | 27d |  |  |  | 160h |
| 77 | 1.4.3.2.1.1 | **Demo Application** | 27d | 2004-12-22 | 2005-01-27 |  | 27d |  |  |  | 160h |
| 78 | 1.4.3.2.1.1.1 | Integrate Authentication | 5d | 2004-12-22 | 2004-12-28 | 74 | 39d | 0d | start no earlier than 2004-12-22 | Kunal | 40h |
| 79 | 1.4.3.2.1.1.2 | User Interface | 10d | 2004-12-29 | 2005-01-11 | 78 | 39d |  |  | Eric | 80h |
| 80 | 1.4.3.2.1.1.3 | Integrate Authorization | 5d | 2005-01-21 | 2005-01-27 | 50 | 27d |  |  | Kunal | 40h |

Notes:
- 79: Gap of a week exists. Evaluate again when Iteration 3 begins

| ID | WBS | Task | Duration | Start | Finish | Predecessors | Complete | Remaining | Total slack | Free slack | Constraint | Resources | Work | Actual work |
| --- | --- | --- | --- | --- | --- | --- | --- | --- | --- | --- | --- | --- | --- | --- |
| 81 | 1.4.3.2.2 | **Documentation** | 5d | 2005-01-19 | 2005-01-25 |  |  |  | 29d |  |  |  | 40h |  |
| 82 | 1.4.3.2.2.1 | User Guide | 5d | 2005-01-19 | 2005-01-25 |  |  |  | 29d |  | start no earlier than 2005-01-19 | Vinay | 40h |  |
| 83 | 1.4.4 | **Iteration IV** | 88d | 2004-10-18 A | 2005-02-16 |  | 8% | 81.23d | 13d |  |  | Brian | 3488h | 389.64h |
| 84 | 1.4.4.1 | Iteration Plan | 2d | 2004-10-18 | 2004-10-19 |  |  |  | 99d |  | start no earlier than 2004-10-18 | Brian | 16h |  |
| 85 | 1.4.4.2 | **User Provisioning** | 86d | 2004-10-20 A | 2005-02-16 |  | 8% | 79.3d | 13d |  |  | Brian | 2768h | 335.49h |
| 86 | 1.4.4.2.1 | **Design** | 20d | 2004-10-20 A | 2004-11-16 |  | 71% | 5.88d | 79d |  |  | Brian | 392h | 281.88h |
| 87 | 1.4.4.2.1.1 | **Documentation** | 20d | 2004-10-20 A | 2004-11-16 |  | 71% | 5.88d | 79d |  |  | Brian | 232h | 168.94h |
| 88 | 1.4.4.2.1.1.1 | Level 3 - 4 Use Cases | 1d | 2004-10-27 A | 2004-10-27 A | 84 | 100% |  |  |  | start no earlier than 2004-10-27 | Brian | 8h | 8h |
| 89 | 1.4.4.2.1.1.2 | Use Case Model | 6d | 2004-10-20 A | 2004-10-27 A | 84 | 100% |  |  |  | finish no earlier than 2004-10-27 | Brian | 48h | 48h |
| 90 | 1.4.4.2.1.1.3 | Gather Requirements | 5d | 2004-10-28 A | 2004-11-03 A | 89 | 100% |  |  |  |  |  |  |  |
| 91 | 1.4.4.2.1.1.4 | Create DDL for mysql | 1d | 2004-11-10 | 2004-11-10 |  |  |  | 79d | 0d | start no earlier than 2004-11-10 |  |  |  |
| 92 | 1.4.4.2.1.1.5 | Generate Hibernate Mappings | 1d | 2004-11-11 | 2004-11-11 | 91 |  |  | 79d | 0d |  |  |  |  |
| 93 | 1.4.4.2.1.1.6 | Generate Hibernate Mappings | 1d | 2004-11-12 | 2004-11-12 | 92 |  |  | 79d | 0d |  |  |  |  |
| 94 | 1.4.4.2.1.1.7 | UML Class Diagram | 1d | 2004-11-15 | 2004-11-15 | 93 |  |  | 79d | 0d |  | Brian | 8h |  |
| 95 | 1.4.4.2.1.1.8 | Design Review | 1d | 2004-11-16 | 2004-11-16 | 94 |  |  | 79d |  | finish no earlier than 2004-11-15 | Vinay | 8h |  |
| 96 | 1.4.4.2.2 | **Implementation** | 55d | 2004-11-05 | 2005-01-20 |  |  |  | 29d |  |  | Brian | 1392h |  |
| 97 | 1.4.4.2.2.1 | Create Roles | 5d | 2004-11-16 | 2004-11-22 |  |  |  | 51d | 0d | start no earlier than 2004-11-16 | Brian | 40h |  |
| 98 | 1.4.4.2.2.2 | Modify Roles | 5d | 2004-11-23 | 2004-11-29 | 97 |  |  | 51d | 0d |  | Brian | 40h |  |
| 99 | 1.4.4.2.2.3 | Create Privileges | 3d | 2004-11-30 | 2004-12-02 | 98 |  |  | 51d | 0d |  | Brian | 24h |  |
| 100 | 1.4.4.2.2.4 | Modify Privileges | 3d | 2004-12-03 | 2004-12-07 | 99 |  |  | 51d | 0d |  | Brian | 24h |  |
| 101 | 1.4.4.2.2.5 | Assign Privileges to Roles | 3d | 2004-12-08 | 2004-12-10 | 100 |  |  | 51d | 0d |  | Brian | 24h |  |
| 102 | 1.4.4.2.2.6 | Create Protection Elements | 2d | 2004-12-13 | 2004-12-14 | 101 |  |  | 51d | 0d |  | Brian | 16h |  |
| 103 | 1.4.4.2.2.7 | Modify Protection Elements | 2d | 2004-12-15 | 2004-12-16 | 102 |  |  | 51d | 0d |  | Brian | 16h |  |
| 104 | 1.4.4.2.2.8 | Create Protection Group | 2d | 2004-12-17 | 2004-12-20 | 103 |  |  | 51d | 0d |  | Brian | 16h |  |
| 105 | 1.4.4.2.2.9 | Modify Protection Group | 2d | 2004-12-21 | 2004-12-22 | 104 |  |  | 51d | 0d |  | Brian | 16h |  |
| 106 | 1.4.4.2.2.10 | Assign Protection Elements to Groups | 2d | 2004-12-23 | 2004-12-24 | 105 |  |  | 51d |  |  | Brian | 16h |  |
| 107 | 1.4.4.2.2.11 | Assign Protection Elements to Users | 2d | 2005-01-04 | 2005-01-05 |  |  |  | 41d | 0d | start no earlier than 2005-01-04 | Brian | 16h |  |
| 108 | 1.4.4.2.2.12 | Assign Protection Group to User Roles | 2d | 2005-01-06 | 2005-01-07 | 107 |  |  | 41d |  |  | Brian | 16h |  |
| 109 | 1.4.4.2.2.13 | Web Interface | 28d | 2004-12-06 | 2005-01-12 |  |  |  | 32d | 0d | finish no earlier than 2005-01-12 | Eric | 224h |  |
| 110 | 1.4.4.2.2.14 | Validation | 6d | 2005-01-13 | 2005-01-20 | 109 |  |  | 32d |  |  | Brian | 48h |  |
| 111 | 1.4.4.2.2.15 | Code Reviews | 52d | 2004-11-05 | 2005-01-17 |  |  |  | 29d | 0d | finish no earlier than 2005-01-17 | Vinay | 416h |  |

| ID | WBS | Task | Duration | Start | Finish | Predecessors | Total slack | Free slack | Constraint | Resources | Work |
| --- | --- | --- | --- | --- | --- | --- | --- | --- | --- | --- | --- |
| 112 | 1.4.4.2.3 | **Unit Testing** | 6d | 2005-01-18 | 2005-01-25 |  | 29d |  |  | Brian | 104h |
| 113 | 1.4.4.2.3.1 | Perform Testing | 3d | 2005-01-18 | 2005-01-20 | 111 | 29d | 0d | start no earlier than 2004-12-15 | Eric | 24h |
| 114 | 1.4.4.2.3.2 | Evaluate Results | 1d | 2005-01-21 | 2005-01-21 | 113 | 29d | 0d |  | Brian; Eric | 16h |
| 115 | 1.4.4.2.3.3 | Integration Testing | 1d | 2005-01-24 | 2005-01-24 | 114 | 29d | 0d |  | Brian | 8h |
| 116 | 1.4.4.2.3.4 | User Working Group Review | 1d | 2005-01-25 | 2005-01-25 | 115 | 29d |  |  | Brian | 8h |
| 117 | 1.4.4.2.4 | User Guide | 12d | 2005-02-01 | 2005-02-16 |  | 13d |  | start no earlier than 2005-02-01 | Brian; Eric | 192h |
| 118 | 1.5 | **Transition** | 41d | 2005-01-10 | 2005-03-07 |  | 0d |  |  |  | 384h |
| 119 | 1.5.1 | **Iteration I** | 21.5d | 2005-01-10 | 2005-02-08 |  | 19.5d |  |  |  | 296h |
| 120 | 1.5.1.1 | System Integration Document | 12d | 2005-01-10 | 2005-01-25 |  | 21d | 0d | start no earlier than 2005-01-10 | Vinay | 96h |
| 121 | 1.5.1.2 | caCore Technical Guide | 8d | 2005-01-26 | 2005-02-04 | 120 | 21d |  |  |  |  |
| 122 | 1.5.1.3 | **Integration Pilot (Release One)** | 19.5d | 2005-01-12 | 2005-02-08 |  | 19.5d |  |  |  | 200h |
| 123 | 1.5.1.3.1 | **Client Implementation** | 9d | 2005-01-12 | 2005-01-24 |  | 30d |  |  |  | 72h |
| 124 | 1.5.1.3.1.1 | Design | 2d | 2005-01-12 | 2005-01-13 |  | 30d | 0d | start no earlier than 2005-01-12 | Vinay | 16h |
| 125 | 1.5.1.3.1.2 | Development | 5d | 2005-01-14 | 2005-01-20 | 124 | 30d | 0d |  | Kunal | 40h |
| 126 | 1.5.1.3.1.3 | Testing | 2d | 2005-01-21 | 2005-01-24 | 125 | 30d |  |  | Kunal | 16h |
| 127 | 1.5.1.3.2 | Integration Testing | 5d | 2005-01-25 | 2005-01-31 |  | 19.5d | 0d | start no earlier than 2005-01-25 | Vinay; Eric | 80h |
| 128 | 1.5.1.3.3 | Evaluate Results | 0.5d | 2005-02-01 | 2005-02-01 | 127 | 19.5d | 0d |  | Vinay; Eric | 8h |
| 129 | 1.5.1.3.4 | Apply Needed Enhancements | 5d | 2005-02-01 | 2005-02-08 | 128 | 19.5d |  |  | Kunal | 40h |
| 130 | 1.5.2 | **Iteration II** | 7d | 2005-02-15 | 2005-02-23 |  | 8d |  |  |  | 88h |
| 131 | 1.5.2.1 | Staging | 5d | 2005-02-15 | 2005-02-21 |  | 10d |  | start no earlier than 2005-02-15 | Vinay | 40h |
| 132 | 1.5.2.2 | Testing | 3d | 2005-02-21 | 2005-02-23 |  | 8d |  | start no earlier than 2005-02-21 | Vinay; Eric | 48h |
| 133 | 1.5.3 | caCore Release 3 | 1d | 2005-03-07 | 2005-03-07 |  | 0d |  | start no earlier than 2005-03-07 |  |  |
